Schedule from MS Project, 2014-01-20 to 2014-05-19.
Lattice Semiconductor

## Calendars

- Standard: Mon-Fri 08:00-12:00, 13:00-17:00; Sat-Sun off.

## Resources

| Resource |
| --- |
| Robert |
| Rob |
| Robin |

## Schedule

| ID | WBS | Task | Type | Duration | Start | Finish | Predecessors | Total slack | Resources | Work |
| --- | --- | --- | --- | --- | --- | --- | --- | --- | --- | --- |
| 1 | 1 | **RTx Controller** |  | 86d | 2014-01-20 | 2014-05-19 |  | 0d |  | 1123.5h |
| 2 | 1.1 | **RTx Controller Hardware** |  | 86d | 2014-01-20 | 2014-05-19 |  | 0d |  | 600h |
| 3 | 1.1.1 | **Schematic** |  | 38.5d | 2014-01-20 | 2014-03-13 |  | 0d |  | 340h |
| 4 | 1.1.1.1 | Verify processor selection | manual | 6d | 2014-01-20 | 2014-01-27 |  |  | Robert | 48h |
| 5 | 1.1.1.2 | Review and document ADC filter design | manual | 3d | 2014-01-28 | 2014-01-30 | 4 |  | Robert | 24h |
| 6 | 1.1.1.3 | Implement Ethernet port in HW | manual | 14d | 2014-01-31 | 2014-02-19 | 5 |  | Robert | 112h |
| 7 | 1.1.1.4 | Implement USB port in HW | manual | 2d | 2014-02-20 | 2014-02-21 | 6 |  | Robert | 16h |
| 8 | 1.1.1.5 | Determine PCB power requirements and design power supplies | manual | 6d | 2014-02-24 | 2014-03-03 | 7 |  | Robert | 48h |
| 9 | 1.1.1.6 | Select connectors and cabling | manual | 3.5d | 2014-03-04 | 2014-03-07 | 8 |  | Robert | 28h |
| 10 | 1.1.1.7 | Determine processor pin-out | manual | 4d | 2014-03-07 | 2014-03-13 | 9 |  | Robert; Rob | 64h |
| 11 | 1.1.2 | **PCB** |  | 47d | 2014-03-14 | 2014-05-19 | 3 |  |  | 260h |
| 12 | 1.1.2.1 | **Layout PCB** |  | 12d | 2014-03-13 | 2014-03-31 | 3 | 0d |  | 164h |
| 13 | 1.1.2.1.1 | General Layout | manual | 8.5d | 2014-03-19 | 2014-03-31 | 3, 78, 14 |  | Robin; Rob | 136h |
| 14 | 1.1.2.1.2 | High-speed Signal Routing (including research) | manual | 3.5d | 2014-03-13 | 2014-03-18 | 3 |  | Robert | 28h |
| 15 | 1.1.2.2 | Assemble PCB | manual | 4d | 2014-03-31 | 2014-04-04 | 13, 14 |  | Robin; Rob; Robert | 96h |
| 16 | 1.2 | **RTx Controller Firmware** |  | 65.5d | 2014-01-20 | 2014-04-21 |  | 0d |  | 523.5h |
| 17 | 1.2.1 | **Develop Axis Position Control Loop** |  | 15d | 2014-01-20 | 2014-02-07 |  | 0d |  | 120h |
| 18 | 1.2.1.1 | Research Control Theory | manual | 7d | 2014-01-20 | 2014-01-28 |  |  | Rob | 56h |
| 19 | 1.2.1.2 | Model control transfer function and derive PID coefficients | manual | 4d | 2014-01-29 | 2014-02-03 | 18 |  | Rob | 32h |
| 20 | 1.2.1.3 | Develop code for PID loop | manual | 4d | 2014-02-04 | 2014-02-07 | 19 |  | Rob | 32h |
| 21 | 1.2.2 | **Develop Ethernet API** |  | 20.44d | 2014-01-20 | 2014-02-17 |  | 0d |  | 163.5h |
| 22 | 1.2.2.1 | Research ChibiOS/RT UDP implementation | manual | 3.5h | 2014-01-20 | 2014-01-20 |  |  | Rob | 3.5h |
| 23 | 1.2.2.2 | Determine required functionalities | manual | 13d | 2014-01-28 | 2014-02-13 | 26 |  | Rob | 104h |
| 24 | 1.2.2.3 | Write code | manual | 7d | 2014-02-06 | 2014-02-17 | 23 |  | Rob | 56h |

| ID | WBS | Task | Type | Duration | Start | Finish | Predecessors | Total slack | Resources | Work |
| --- | --- | --- | --- | --- | --- | --- | --- | --- | --- | --- |
| 25 | 1.2.3 | **Develop tracking algorithm** |  | 65.5d | 2014-01-20 | 2014-04-21 |  | 0d |  | 240h |
| 26 | 1.2.3.1 | Research capabilities of Sightline SLA1500 | manual | 6d | 2014-01-20 | 2014-01-27 |  |  | Rob | 48h |
| 27 | 1.2.3.2 | Research capabilities of available imaging devices (Rob – 3 hours) | manual | 2d | 2014-01-28 | 2014-01-29 | 26 |  | Rob | 16h |
| 28 | 1.2.3.3 | Develop the algorithm | manual | 11d | 2014-01-30 | 2014-02-13 | 27 |  | Rob | 88h |
| 29 | 1.2.3.4 | Write code | manual | 11d | 2014-04-04 | 2014-04-21 | 28, 10 |  | Rob | 88h |
| 30 | 2 | **Battery Unit** |  | 31d | 2014-01-22 | 2014-03-05 |  | 0d |  | 24h |
| 31 | 2.1 | Determine system power requirements | manual | 2d | 2014-03-04 | 2014-03-05 | 8 |  | Robert | 16h |
| 32 | 2.2 | Select batteries and battery “enclosure” | manual | 1d | 2014-01-22 | 2014-01-22 | 31 |  | Rob | 8h |
| 33 | 3 | **Manual Control Unit** |  | 12d | 2014-01-20 | 2014-02-04 |  | 0d |  | 136h |
| 34 | 3.1 | **Hardware** |  | 5d | 2014-01-20 | 2014-01-24 |  | 0d |  | 40h |
| 35 | 3.1.1 | Design ADC filters for the manual inputs | manual | 2d | 2014-01-20 | 2014-01-21 |  |  | Rob | 16h |
| 36 | 3.1.2 | Complete enclosure of manual controller | manual | 3d | 2014-01-22 | 2014-01-24 | 35 |  | Robin | 24h |
| 37 | 3.2 | **Software** |  | 10d | 2014-01-22 | 2014-02-04 |  | 0d |  | 96h |
| 38 | 3.2.1 | Develop manual control algorithm | manual | 6d | 2014-01-22 | 2014-01-29 | 35 |  | Rob | 48h |
| 39 | 3.2.2 | Write code | manual | 6d | 2014-01-28 | 2014-02-04 | 38 |  | Rob | 48h |
| 40 | 4 | **FMEA** |  | 25.5d | 2014-01-20 | 2014-02-24 | 3, 33, 30 |  |  | 208h |
| 41 | 4.1 | Determine all single points of failure and determine which ones could result in injury or permanent damage | manual | 9d | 2014-01-20 | 2014-01-30 |  |  | Robin | 72h |
| 42 | 4.2 | Determine methods of prevention | manual | 17d | 2014-01-30 | 2014-02-24 | 41 |  | Robin | 136h |
| 43 | 5 | **Design the power filter for the axis motors** |  | 6d | 2014-01-20 | 2014-01-27 |  | 0d |  | 48h |
| 44 | 5.1 | Schematic | manual | 3d | 2014-01-20 | 2014-01-22 |  |  | Robin | 24h |
| 45 | 5.2 | PCB layout | manual | 3d | 2014-01-23 | 2014-01-27 | 44 |  | Robin | 24h |
| 46 | 6 | Select Ethernet switch | manual | 1.5d | 2014-01-20 | 2014-01-21 |  |  | Robert | 12h |
| 47 | 7 | **Testing** |  | 17d | 2014-01-20 | 2014-02-11 |  | 0d |  | 860h |
| 48 | 7.1 | **RTx controller** |  | 10d | 2014-01-20 | 2014-01-31 |  | 0d |  | 228h |
| 49 | 7.1.1 | **Hardware** |  | 5.5d | 2014-01-20 | 2014-01-27 |  | 0d |  | 88h |
| 50 | 7.1.1.1 | Test development | manual | 1.5d | 2014-01-20 | 2014-01-21 |  |  | Robert; Robin | 24h |
| 51 | 7.1.1.2 | Test execution and debugging | manual | 2d | 2014-01-21 | 2014-01-23 | 50 |  | Robert; Robin | 32h |
| 52 | 7.1.1.3 | Revision | manual | 2d | 2014-01-23 | 2014-01-27 | 51 |  | Robert; Robin | 32h |

| ID | WBS | Task | Type | Duration | Start | Finish | Predecessors | Total slack | Resources | Work |
| --- | --- | --- | --- | --- | --- | --- | --- | --- | --- | --- |
| 53 | 7.1.2 | **Firmware** |  | 10d | 2014-01-20 | 2014-01-31 |  | 0d |  | 80h |
| 54 | 7.1.2.1 | Test development | manual | 32h | 2014-01-20 | 2014-01-23 |  |  | Rob | 32h |
| 55 | 7.1.2.2 | Test execution and debugging | manual | 32h | 2014-01-24 | 2014-01-29 | 54 |  | Rob | 32h |
| 56 | 7.1.2.3 | Revision | manual | 16h | 2014-01-30 | 2014-01-31 | 55 |  | Rob | 16h |
| 57 | 7.1.3 | **Integration** |  | 2.5d | 2014-01-20 | 2014-01-22 |  | 0d |  | 60h |
| 58 | 7.1.3.1 | Test development | manual | 8h | 2014-01-20 | 2014-01-20 |  |  | Robin; Rob; Robert | 24h |
| 59 | 7.1.3.2 | Test execution and debugging | manual | 6h | 2014-01-21 | 2014-01-21 | 58 |  | Rob; Robert; Robin | 18h |
| 60 | 7.1.3.3 | Revision | manual | 6h | 2014-01-21 | 2014-01-22 | 59 |  | Rob; Robert; Robin | 18h |
| 61 | 7.2 | **Manual controller** |  | 15d | 2014-01-20 | 2014-02-07 |  | 0d |  | 224h |
| 62 | 7.2.1 | **Hardware** |  | 3d | 2014-01-20 | 2014-01-22 |  | 0d |  | 32h |
| 63 | 7.2.1.1 | Test development | manual | 1d | 2014-01-20 | 2014-01-20 |  |  | Robert; Robin | 16h |
| 64 | 7.2.1.2 | Test execution and debugging | manual | 1d | 2014-01-21 | 2014-01-21 | 63 |  | Robert; Robin | 16h |
| 65 | 7.2.1.3 | Revision | manual | 1d | 2014-01-22 | 2014-01-22 | 64 |  |  |  |
| 66 | 7.2.2 | **Firmware** |  | 15d | 2014-01-20 | 2014-02-07 |  | 0d |  | 120h |
| 67 | 7.2.2.1 | Test development | manual | 6d | 2014-01-20 | 2014-01-27 |  |  | Rob | 48h |
| 68 | 7.2.2.2 | Test execution and debugging | manual | 6d | 2014-01-28 | 2014-02-04 | 67 |  | Rob | 48h |
| 69 | 7.2.2.3 | Revision | manual | 3d | 2014-02-05 | 2014-02-07 | 68 |  | Rob | 24h |
| 70 | 7.2.3 | **Integration** |  | 3d | 2014-01-20 | 2014-01-22 |  | 0d |  | 72h |
| 71 | 7.2.3.1 | Test development | manual | 1d | 2014-01-20 | 2014-01-20 |  |  | Robert; Robin; Rob | 24h |
| 72 | 7.2.3.2 | Test execution and debugging | manual | 1d | 2014-01-21 | 2014-01-21 | 71 |  | Robert; Robin; Rob | 24h |
| 73 | 7.2.3.3 | Revision | manual | 1d | 2014-01-22 | 2014-01-22 | 72 |  | Robert; Robin; Rob | 24h |
| 74 | 7.3 | **System integration** |  | 17d | 2014-01-20 | 2014-02-11 |  | 0d |  | 408h |
| 75 | 7.3.1 | Test development | manual | 3d | 2014-01-20 | 2014-01-22 |  |  | Robert; Robin; Rob | 72h |
| 76 | 7.3.2 | Test execution and debugging | manual | 3d | 2014-01-23 | 2014-01-27 | 75 |  | Robert; Robin; Rob | 72h |
| 77 | 7.3.3 | Revision | manual | 11d | 2014-01-28 | 2014-02-11 | 76 |  | Robert; Robin; Rob | 264h |

| ID | WBS | Task | Type | Duration | Start | Finish | Predecessors | Resources | Work |
| --- | --- | --- | --- | --- | --- | --- | --- | --- | --- |
| 78 | 8 | **Enclosure** |  | 6d | 2014-01-20 | 2014-01-27 | 27 |  | 48h |
| 79 | 8.1 | Select enclosure and determine PCB size and shape | manual | 6d | 2014-01-20 | 2014-01-27 |  | Robin | 48h |
