# RTx_schedule_updated

Schedule from MS Project, 2014-01-20 to 2014-06-05.
Lattice Semiconductor

## Calendars

- Standard: Mon-Sun 08:00-12:00, 13:00-17:00.

## Resources

| Resource |
| --- |
| Robert |
| Rob |
| Robin |

## Schedule

| ID | WBS | Task | Type | Duration | Start | Finish | Predecessors | Total slack | Resources | Work |
| --- | --- | --- | --- | --- | --- | --- | --- | --- | --- | --- |
| 1 | 1 | **RTx Controller** |  | 98d | 2014-01-20 | 2014-04-27 |  | 0d |  | 1180h |
| 2 | 1.1 | **RTx Controller Hardware** |  | 94d | 2014-01-20 | 2014-04-23 |  | 0d |  | 636h |
| 3 | 1.1.1 | **Schematic** |  | 39d | 2014-01-20 | 2014-02-27 |  | 0d |  | 368h |
| 4 | 1.1.1.1 | Verify processor selection (Robert – 8 hours) | manual | 6d | 2014-01-20 | 2014-01-25 |  |  | Robert | 48h |
| 5 | 1.1.1.2 | Review and document ADC filter design (Rob – 4 hours) | manual | 5d | 2014-01-26 | 2014-01-30 |  |  | Rob | 40h |
| 6 | 1.1.1.3 | Implement Ethernet port in HW (Robert – 20 hours) | manual | 14d | 2014-01-31 | 2014-02-13 |  |  | Robert | 112h |
| 7 | 1.1.1.4 | Implement USB port in HW (Robert – 3 hours) | manual | 3d | 2014-01-31 | 2014-02-02 |  |  | Robin | 24h |
| 8 | 1.1.1.5 | Determine PCB power requirements and design power supplies (Robert – 8 hours) | manual | 6d | 2014-02-14 | 2014-02-19 |  |  | Robert | 48h |
| 9 | 1.1.1.6 | Select connectors and cabling (Robert – 5 hours) | manual | 4d | 2014-02-20 | 2014-02-23 |  |  | Robert | 32h |
| 10 | 1.1.1.7 | Determine processor pin-out (Robert and Rob – 6 hours) | manual | 4d | 2014-02-24 | 2014-02-27 |  |  | Robert; Rob | 64h |
| 11 | 1.1.2 | **PCB** |  | 55d | 2014-02-28 | 2014-04-23 | 3 | 0d |  | 268h |
| 12 | 1.1.2.1 | **Layout PCB** |  | 12.5d | 2014-02-28 | 2014-03-12 | 3 | 0d |  | 172h |
| 13 | 1.1.2.1.1 | General Layout (Robin and Rob – 12 hours) | manual | 9d | 2014-03-03 | 2014-03-12 | 3, 78, 14 |  | Robin; Rob | 144h |
| 14 | 1.1.2.1.2 | High-speed Signal Routing (including research) (Robert – 5 hours) | manual | 3.5d | 2014-02-28 | 2014-03-03 | 3 |  | Robert | 28h |
| 15 | 1.1.2.2 | Assemble PCB (All members – 6 hours) | manual | 4d | 2014-04-20 | 2014-04-23 | 13, 14 |  | Robert; Robin; Rob | 96h |
| 16 | 1.2 | **RTx Controller Firmware** |  | 81d | 2014-02-06 | 2014-04-27 |  | 0d |  | 544h |
| 17 | 1.2.1 | **Develop Axis Position Control Loop** |  | 14d | 2014-02-06 | 2014-02-19 |  | 0d |  | 112h |
| 18 | 1.2.1.1 | Research Control Theory (Rob – 10 hours) | manual | 6d | 2014-02-06 | 2014-02-11 |  |  | Rob | 48h |
| 19 | 1.2.1.2 | Model control transfer function and derive PID coefficients (Rob – 6 hours) | manual | 4d | 2014-02-12 | 2014-02-15 | 18 |  | Rob | 32h |
| 20 | 1.2.1.3 | Develop code for PID loop (Rob – 6 hours) | manual | 4d | 2014-02-16 | 2014-02-19 | 19 |  | Rob | 32h |
| 21 | 1.2.2 | **Develop Ethernet API** |  | 43d | 2014-02-20 | 2014-04-03 |  | 0d |  | 192h |
| 22 | 1.2.2.1 | Research ChibiOS/RT UDP implementation (Rob – 5 hours) | manual | 4d | 2014-02-20 | 2014-02-23 |  |  | Rob | 32h |
| 23 | 1.2.2.2 | Determine required functionalities (Rob – 18 hours) | manual | 13d | 2014-03-15 | 2014-03-27 | 26, 22 |  | Rob | 104h |
| 24 | 1.2.2.3 | Write code (Rob – 10 hours) | manual | 7d | 2014-03-28 | 2014-04-03 | 23 |  | Rob | 56h |

| ID | WBS | Task | Type | Duration | Start | Finish | Predecessors | Total slack | Resources | Work |
| --- | --- | --- | --- | --- | --- | --- | --- | --- | --- | --- |
| 25 | 1.2.3 | **Develop tracking algorithm** |  | 59d | 2014-02-28 | 2014-04-27 |  | 0d |  | 240h |
| 26 | 1.2.3.1 | Research capabilities of Sightline SLA1500 (Rob – 8 hours) | manual | 6d | 2014-02-28 | 2014-03-05 |  |  | Rob | 48h |
| 27 | 1.2.3.2 | Research capabilities of available imaging devices (Rob – 3 hours) | manual | 2d | 2014-04-04 | 2014-04-05 | 26 |  | Rob | 16h |
| 28 | 1.2.3.3 | Develop the algorithm (Rob – 16 hours) | manual | 11d | 2014-04-06 | 2014-04-16 | 27 |  | Rob | 88h |
| 29 | 1.2.3.4 | Write code (Rob – 16 hours) | manual | 11d | 2014-04-17 | 2014-04-27 | 28, 10 |  | Rob | 88h |
| 30 | 2 | **Battery Unit** |  | 25d | 2014-04-04 | 2014-04-28 |  | 0d |  | 24h |
| 31 | 2.1 | Determine system power requirements (Robert – 3 hours) | manual | 2d | 2014-04-04 | 2014-04-05 | 8 |  | Robert | 16h |
| 32 | 2.2 | Select batteries and battery “enclosure” (Rob – 1 hour) | manual | 1d | 2014-04-28 | 2014-04-28 | 31 |  | Rob | 8h |
| 33 | 3 | **Manual Control Unit** |  | 100d | 2014-01-31 | 2014-05-10 |  | 0d |  | 168h |
| 34 | 3.1 | **Hardware** |  | 20d | 2014-01-31 | 2014-02-19 |  | 0d |  | 72h |
| 35 | 3.1.1 | Design ADC filters for the manual inputs (Rob – 3 hours) | manual | 6d | 2014-01-31 | 2014-02-05 |  |  | Rob | 48h |
| 36 | 3.1.2 | Complete enclosure of manual controller (Robin – 4 hours) | manual | 3d | 2014-02-17 | 2014-02-19 | 35 |  | Robin | 24h |
| 37 | 3.2 | **Software** |  | 12d | 2014-04-29 | 2014-05-10 |  | 0d |  | 96h |
| 38 | 3.2.1 | Develop manual control algorithm (Rob – 8 hours) | manual | 6d | 2014-04-29 | 2014-05-04 | 35 |  | Rob | 48h |
| 39 | 3.2.2 | Write code (Rob – 8 hours) | manual | 6d | 2014-05-05 | 2014-05-10 | 38 |  | Rob | 48h |
| 40 | 4 | **FMEA** |  | 26d | 2014-05-11 | 2014-06-05 | 3, 33, 30 | 0d |  | 208h |
| 41 | 4.1 | Determine all single points of failure and determine which ones could result in injury or permanent damage (Robin – 12 hours) |  | 9d | 2014-05-11 | 2014-05-19 |  | 0d | Robin | 72h |
| 42 | 4.2 | Determine methods of prevention (Robin – 24 hours) |  | 17d | 2014-05-20 | 2014-06-05 | 41 | 0d | Robin | 136h |
| 43 | 5 | **Design the power filter for the axis motors** |  | 8d | 2014-02-03 | 2014-02-10 |  | 0d |  | 64h |
| 44 | 5.1 | Schematic (Robin – 4 hours) | manual | 4d | 2014-02-03 | 2014-02-06 |  |  | Robin | 32h |
| 45 | 5.2 | PCB layout (Robin – 4 hours) | manual | 4d | 2014-02-07 | 2014-02-10 | 44 |  | Robin | 32h |
| 46 | 6 | Select Ethernet switch (Robert – 2 hours) | manual | 5d | 2014-01-26 | 2014-01-30 |  |  | Robert | 40h |
| 47 | 7 | **Testing** |  | 40d? | 2014-01-26 | 2014-03-06 | 1 |  |  |  |
| 48 | 7.1 | **RTx controller** |  | 1d | 2014-01-26 | 2014-01-26 |  |  |  |  |
| 49 | 7.1.1 | **Hardware** |  | 1d | 2014-01-26 | 2014-01-26 |  |  |  |  |
| 50 | 7.1.1.1 | Test development (Robert/Robin – 2 hours) | manual | 1.5d | 2014-01-26 | 2014-01-27 |  |  |  |  |
| 51 | 7.1.1.2 | Test execution and debugging (Robert/Robin – 3 hours) | manual | 2d | 2014-01-26 | 2014-01-27 | 50 |  |  |  |
| 52 | 7.1.1.3 | Revision (Robert /Robin– 3 hours) | manual | 2d | 2014-01-26 | 2014-01-27 | 51 |  |  |  |

| ID | WBS | Task | Type | Duration | Start | Finish | Predecessors |
| --- | --- | --- | --- | --- | --- | --- | --- |
| 53 | 7.1.2 | **Firmware** |  | 1d | 2014-01-26 | 2014-01-26 |  |
| 54 | 7.1.2.1 | Test development (Rob – 32 hours) | manual | 22d | 2014-01-26 | 2014-02-16 |  |
| 55 | 7.1.2.2 | Test execution and debugging (Rob – 32 hours) | manual | 22d | 2014-01-26 | 2014-02-16 | 54 |
| 56 | 7.1.2.3 | Revision (Rob – 16 hours) | manual | 11d | 2014-01-26 | 2014-02-05 | 55 |
| 57 | 7.1.3 | **Integration** |  | 1d | 2014-01-26 | 2014-01-26 |  |
| 58 | 7.1.3.1 | Test development (All members – 8 hours) | manual | 6d | 2014-01-26 | 2014-01-31 |  |
| 59 | 7.1.3.2 | Test execution and debugging (All members – 6 hours) | manual | 4d | 2014-01-26 | 2014-01-29 | 58 |
| 60 | 7.1.3.3 | Revision (All members - 6 hours) | manual | 4d | 2014-01-26 | 2014-01-29 | 59 |
| 61 | 7.2 | **Manual controller** |  | 1d | 2014-01-26 | 2014-01-26 |  |
| 62 | 7.2.1 | **Hardware** |  | 1d | 2014-01-26 | 2014-01-26 |  |
| 63 | 7.2.1.1 | Test development (Robert/Robin – 1 hour) | manual | 1d | 2014-01-26 | 2014-01-26 |  |
| 64 | 7.2.1.2 | Test execution and debugging (Robert/Robin – 1 hour) | manual | 1d | 2014-01-26 | 2014-01-26 | 63 |
| 65 | 7.2.1.3 | Revision (Robert/Robin – 1 hour) | manual | 1d | 2014-01-26 | 2014-01-26 | 64 |
| 66 | 7.2.2 | **Firmware** |  | 1d | 2014-01-26 | 2014-01-26 |  |
| 67 | 7.2.2.1 | Test development (Rob – 8 hours) | manual | 6d | 2014-01-26 | 2014-01-31 |  |
| 68 | 7.2.2.2 | Test execution and debugging (Rob – 8 hours) | manual | 6d | 2014-01-26 | 2014-01-31 | 67 |
| 69 | 7.2.2.3 | Revision (Rob – 4 hours) | manual | 3d | 2014-01-26 | 2014-01-28 | 68 |
| 70 | 7.2.3 | **Integration** |  | 1d | 2014-01-26 | 2014-01-26 |  |
| 71 | 7.2.3.1 | Test development (All members – 1 hour) | manual | 1d | 2014-01-26 | 2014-01-26 |  |
| 72 | 7.2.3.2 | Test execution and debugging (All members – 1 hour) | manual | 1d | 2014-01-26 | 2014-01-26 | 71 |
| 73 | 7.2.3.3 | Revision (All members – 1 hour) | manual | 1d | 2014-01-26 | 2014-01-26 | 72 |
| 74 | 7.3 | **System integration** |  | 1d | 2014-01-26 | 2014-01-26 |  |
| 75 | 7.3.1 | Test development (All members – 4 hours) | manual | 3d | 2014-01-26 | 2014-01-28 |  |
| 76 | 7.3.2 | Test execution and debugging (All members – 4 hours) | manual | 3d | 2014-01-26 | 2014-01-28 | 75 |
| 77 | 7.3.3 | Revision (All members – 16 hours) | manual | 11d | 2014-01-26 | 2014-02-05 | 76 |

| ID | WBS | Task | Type | Duration | Start | Finish | Total slack | Resources | Work |
| --- | --- | --- | --- | --- | --- | --- | --- | --- | --- |
| 78 | 8 | **Enclosure** |  | 6d | 2014-02-11 | 2014-02-16 | 0d |  | 48h |
| 79 | 8.1 | Select enclosure and determine PCB size and shape (Robin – 8 hours) | manual | 6d | 2014-02-11 | 2014-02-16 |  | Robin | 48h |
| 80 | 9 | **Project Management** |  | 5d | 2014-01-26 | 2014-01-30 | 0d |  | 40h |
| 81 | 9.1 | Complete project proposal documentation | manual | 1d | 2014-01-26 | 2014-01-26 |  | Robin | 8h |
| 82 | 9.2 | Finish scheduling tasks up to testing | manual | 3d | 2014-01-28 | 2014-01-30 |  | Robin | 24h |
| 83 | 9.3 | Write project description for Jeske | manual | 1d | 2014-01-27 | 2014-01-27 |  | Robin | 8h |
